# Pocket Terminal

How a schedule from ProjectLibre changed from version to version. A marks actual dates.

## Version 1 (saved 2025-09-04, file Pocket Terminal.pod)

Note of the change: Added gantt

| ID | WBS | Task | Duration | Start | Finish |
| --- | --- | --- | --- | --- | --- |
| 1 | 1 | **MVP Pocket Terminal** | 1d? | 2025-08-29 | 2025-08-29 |
| 2 | 1.1 | **Administrativo** | 1d? | 2025-08-29 | 2025-08-29 |
| 3 |  | Kick-off | 1d? | 2025-08-29 | 2025-08-29 |
| 4 |  | Especificación de requerimientos | 1d? | 2025-08-29 | 2025-08-29 |
| 5 |  | Diagrama de bloques general | 1d? | 2025-08-29 | 2025-08-29 |
| 6 |  | Definir nombre final del proyecto | 1d? | 2025-08-29 | 2025-08-29 |
| 8 | 1.2 | **Electrónico** | 1d? | 2025-08-29 | 2025-08-29 |
| 9 | 1.2.1 | **Diseño electrónico** | 1d? | 2025-08-29 | 2025-08-29 |
| 10 |  | Diagrama de bloques electrónico | 1d? | 2025-08-29 | 2025-08-29 |
| 11 |  | Revisión de estado inicial esquemático | 1d? | 2025-08-29 | 2025-08-29 |
| 12 |  | Diseño de circuito de audio | 1d? | 2025-08-29 | 2025-08-29 |
| 13 |  | Diseño de circuito de carga/descarga de baterías | 1d? | 2025-08-29 | 2025-08-29 |
| 14 |  | Diseño de circuito de soft latching power | 1d? | 2025-08-29 | 2025-08-29 |
| 15 |  | Diseño de circuito de medición de carga de baterías | 1d? | 2025-08-29 | 2025-08-29 |
| 16 |  | Revisión final de esquemático | 1d? | 2025-08-29 | 2025-08-29 |
| 17 | 1.2.2 | **PCB** | 1d? | 2025-08-29 | 2025-08-29 |
| 18 |  | Diseño de PCB | 1d? | 2025-08-29 | 2025-08-29 |
| 19 |  | Revisión de PCB | 1d? | 2025-08-29 | 2025-08-29 |
| 20 |  | Crear BOM | 1d? | 2025-08-29 | 2025-08-29 |
| 21 |  | Crear Gerber | 1d? | 2025-08-29 | 2025-08-29 |
| 22 | 1.2.3 | **Fabricación** | 1d? | 2025-08-29 | 2025-08-29 |
| 23 |  | Cotizar PCB | 1d? | 2025-08-29 | 2025-08-29 |
| 24 |  | Comprar PCB | 1d? | 2025-08-29 | 2025-08-29 |
| 25 |  | Cotizar componentes | 1d? | 2025-08-29 | 2025-08-29 |
| 26 |  | Comprar componentes | 1d? | 2025-08-29 | 2025-08-29 |
| 27 |  | Fabricación de PCB | 1d? | 2025-08-29 | 2025-08-29 |
| 28 |  | Envío de PCB | 1d? | 2025-08-29 | 2025-08-29 |
| 29 |  | Envío de componentes | 1d? | 2025-08-29 | 2025-08-29 |
| 30 | 1.2.4 | **Ensamble y pruebas** | 1d? | 2025-08-29 | 2025-08-29 |
| 31 |  | Circuito de carga/descarga | 1d? | 2025-08-29 | 2025-08-29 |
| 32 |  | Circuito de medición de carga | 1d? | 2025-08-29 | 2025-08-29 |
| 33 |  | Soft latching power | 1d? | 2025-08-29 | 2025-08-29 |
| 34 |  | Conexión Luckfox Lyra | 1d? | 2025-08-29 | 2025-08-29 |
| 35 |  | RP2040 | 1d? | 2025-08-29 | 2025-08-29 |
| 36 |  | Circuito de audio | 1d? | 2025-08-29 | 2025-08-29 |
| 37 |  | Pantalla | 1d? | 2025-08-29 | 2025-08-29 |
| 38 |  | Correcciones de hardware | 1d? | 2025-08-29 | 2025-08-29 |
| 40 | 1.3 | **Firmware** | 1d? | 2025-08-29 | 2025-08-29 |
| 41 | 1.3.1 | **Luckfox Lyra** | 1d? | 2025-08-29 | 2025-08-29 |
| 42 |  | Linux | 1d? | 2025-08-29 | 2025-08-29 |
| 43 |  | Drivers pantalla | 1d? | 2025-08-29 | 2025-08-29 |
| 44 |  | Drivers audio | 1d? | 2025-08-29 | 2025-08-29 |
| 45 |  | LED RGB | 1d? | 2025-08-29 | 2025-08-29 |
| 46 | 1.3.2 | **RP2040** | 1d? | 2025-08-29 | 2025-08-29 |
| 47 |  | Drivers teclado | 1d? | 2025-08-29 | 2025-08-29 |
| 48 |  | Sistema de encendido/apagado | 1d? | 2025-08-29 | 2025-08-29 |
| 49 |  | Medición de carga de baterías | 1d? | 2025-08-29 | 2025-08-29 |
| 51 | 1.4 | **Diseño/Mecánica** | 1d? | 2025-08-29 | 2025-08-29 |
| 52 |  | Revisión del estado actual del diseño | 1d? | 2025-08-29 | 2025-08-29 |
| 53 |  | Ajustar diseño carcasa | 1d? | 2025-08-29 | 2025-08-29 |
| 54 | 1.4.3 | **Impresión 3D** | 1d? | 2025-08-29 | 2025-08-29 |
| 55 |  | Impresión de carcasa | 1d? | 2025-08-29 | 2025-08-29 |
| 56 |  | Impresión de keycaps | 1d? | 2025-08-29 | 2025-08-29 |

## Version 2 (saved 2025-09-04, file Pocket Terminal.pod)

Note of the change: Avance Gantt

Last finish stays 2025-08-29.

Added:

| ID | Task | Duration | Start | Finish |
| --- | --- | --- | --- | --- |
| 12 | Diseñar Mockup para realizar pruebas | 1d? | 2025-08-29 | 2025-08-29 |
| 17 | Revisión final de esquemático/ Revisión Cruzada | 1d? | 2025-08-29 | 2025-08-29 |
| 26 | Fabricar Mockup | 1d? | 2025-08-29 | 2025-08-29 |
| 55 | Desarrollo conseptual nueva carcasa | 1d? | 2025-08-29 | 2025-08-29 |
| 56 | Ajustar mecanica de las teclas | 1d? | 2025-08-29 | 2025-08-29 |
| 58 | Diseño de anclaje | 1d? | 2025-08-29 | 2025-08-29 |
| 59 | Revisión cruzada | 1d? | 2025-08-29 | 2025-08-29 |
| 61 | Ajuste margenes para Impresion 3D | 1d? | 2025-08-29 | 2025-08-29 |
| 65 | **Integración** | 1d? | 2025-08-29 | 2025-08-29 |
| 66 | Ensamble Final | 1d? | 2025-08-29 | 2025-08-29 |
| 67 | Programar Juego en Pico-8 | 1d? | 2025-08-29 | 2025-08-29 |

Removed: 16 Revisión final de esquemático

## Version 3 (saved 2025-09-04, file Pocket Terminal.pod)

Note of the change: Updated Gantt

Last finish 2025-08-29 → 2026-01-20 (+144d).

Added:

| ID | Task | Duration | Start | Finish | Predecessors | Resources |
| --- | --- | --- | --- | --- | --- | --- |
| 27 | Envío PCB Mock up | 10d | 2025-10-07 | 2025-10-21 | 26 | Proveedor |
| 31 | Cotizar PCB final | 1d | 2025-10-30 | 2025-11-06 | 18 | Jose Lira; Nicolas Selman |
| 32 | Pagar fabricación PCB final | 1d | 2025-11-06 | 2025-11-07 | 31 | Jose Lira; Nicolas Selman |
| 33 | Fabricación de PCB final | 3d | 2025-11-07 | 2025-11-12 | 32 | Proveedor |
| 53 | Firmware de teclas | 3d | 2025-10-21 | 2025-10-30 | 27 | Cristobal Calaf; Jose Lira |
| 59 | Desarrollo conceptual nueva carcasa | 4d | 2025-09-26 | 2025-10-10 | 58 | Cristobal Calaf; Rebeka Gallardo |
| 60 | Ajustar mecánica de las teclas | 3d | 2025-10-10 | 2025-10-23 | 59 | Cristobal Calaf; Rebeka Gallardo |
| 65 | Ajuste márgenes para Impresión 3D | 1d | 2025-11-21 | 2025-11-27 | 27, 63 | Cristobal Calaf; Jose Lira; Rebeka Gallardo |

Removed: 29 Fabricación de PCB; 55 Desarrollo conseptual nueva carcasa; 56 Ajustar mecanica de las teclas; 61 Ajuste margenes para Impresion 3D

Changed:

| ID | Task | Start | Finish | Duration | Predecessors | Other |
| --- | --- | --- | --- | --- | --- | --- |
| 1 | **MVP Pocket Terminal** |  | 2025-08-29 → 2026-01-20 (+144d) | 1d? → 97d? |  |  |
| 2 | **Administrativo** |  | 2025-08-29 → 2025-10-10 (+42d) | 1d? → 28.83d? |  |  |
| 3 | Kick-off |  |  | 1d? → 1d |  | constraint none → must start on 2025-08-29; resources none → Cristobal Calaf; Jose Lira; Nicolas Selman; Rebeka Gallardo |
| 4 | Especificación de requerimientos | 2025-08-29 → 2025-09-04 (+6d) | 2025-08-29 → 2025-09-05 (+7d) | 1d? → 1d | none → 3SS | constraint none → start no earlier than 2025-08-29; resources none → Cristobal Calaf; Jose Lira; Nicolas Selman; Rebeka Gallardo |
| 5 | Diagrama de bloques general | 2025-08-29 → 2025-09-05 (+7d) | 2025-08-29 → 2025-09-11 (+13d) | 1d? → 1d | none → 4 | resources none → Cristobal Calaf; Jose Lira; Nicolas Selman; Rebeka Gallardo |
| 6 | Definir nombre final del proyecto | 2025-08-29 → 2025-10-10 (+42d) | 2025-08-29 → 2025-10-10 (+42d) | 1d? → 0.25d? | none → 59FF | resources none → Cristobal Calaf; Jose Lira; Nicolas Selman; Rebeka Gallardo |
| 8 | **Electrónico** | 2025-08-29 → 2025-09-11 (+13d) | 2025-08-29 → 2025-12-26 (+119d) | 1d? → 71.17d |  |  |
| 9 | **Diseño electrónico** | 2025-08-29 → 2025-09-11 (+13d) | 2025-08-29 → 2025-10-16 (+48d) | 1d? → 23d |  |  |
| 10 | Diagrama de bloques electrónico | 2025-08-29 → 2025-09-11 (+13d) | 2025-08-29 → 2025-09-12 (+14d) | 1d? → 1d | none → 5 | resources none → Cristobal Calaf; Jose Lira; Nicolas Selman |
| 11 | Revisión de estado inicial esquemático | 2025-08-29 → 2025-09-12 (+14d) | 2025-08-29 → 2025-09-25 (+27d) | 1d? → 1d | none → 10 | resources none → Cristobal Calaf; Jose Lira; Nicolas Selman |
| 12 | Diseñar Mockup para realizar pruebas | 2025-08-29 → 2025-09-25 (+27d) | 2025-08-29 → 2025-09-26 (+28d) | 1d? → 1d | none → 11 | resources none → Jose Lira; Nicolas Selman |
| 13 | Diseño de circuito de audio | 2025-08-29 → 2025-09-26 (+28d) | 2025-08-29 → 2025-10-02 (+34d) | 1d? → 1d | none → 12 | resources none → Jose Lira; Nicolas Selman |
| 14 | Diseño de circuito de carga/descarga de baterías | 2025-08-29 → 2025-10-02 (+34d) | 2025-08-29 → 2025-10-03 (+35d) | 1d? → 1d | none → 13 | resources none → Jose Lira; Nicolas Selman |
| 15 | Diseño de circuito de soft latching power | 2025-08-29 → 2025-10-03 (+35d) | 2025-08-29 → 2025-10-09 (+41d) | 1d? → 1d | none → 14 | resources none → Jose Lira; Nicolas Selman |
| 16 | Diseño de circuito de medición de carga de baterías | 2025-08-29 → 2025-10-09 (+41d) | 2025-08-29 → 2025-10-10 (+42d) | 1d? → 1d | none → 15 | resources none → Jose Lira; Nicolas Selman |
| 17 | Revisión final de esquemático/ Revisión Cruzada | 2025-08-29 → 2025-10-10 (+42d) | 2025-08-29 → 2025-10-16 (+48d) | 1d? → 1d | none → 16 | resources none → Cristobal Calaf; Jose Lira; Nicolas Selman |
| 18 | **PCB** | 2025-08-29 → 2025-10-16 (+48d) | 2025-08-29 → 2025-10-30 (+62d) | 1d? → 10d |  |  |
| 19 | Diseño de PCB | 2025-08-29 → 2025-10-16 (+48d) | 2025-08-29 → 2025-10-23 (+55d) | 1d? → 2d | none → 9 | resources none → Jose Lira; Nicolas Selman |
| 20 | Revisión de PCB | 2025-08-29 → 2025-10-23 (+55d) | 2025-08-29 → 2025-10-24 (+56d) | 1d? → 1d | none → 19 | resources none → Cristobal Calaf; Jose Lira; Nicolas Selman |
| 21 | Crear BOM | 2025-08-29 → 2025-10-24 (+56d) | 2025-08-29 → 2025-10-30 (+62d) | 1d? → 1d | none → 20 | resources none → Jose Lira; Nicolas Selman |
| 22 | Crear Gerber | 2025-08-29 → 2025-10-24 (+56d) | 2025-08-29 → 2025-10-30 (+62d) | 1d? → 1d | none → 21SS | resources none → Jose Lira; Nicolas Selman |
| 23 | **Fabricación** | 2025-08-29 → 2025-09-26 (+28d) | 2025-08-29 → 2025-11-26 (+89d) | 1d? → 42d |  |  |
| 24 | Cotizar PCB Mock up | 2025-08-29 → 2025-09-26 (+28d) | 2025-08-29 → 2025-10-02 (+34d) | 1d? → 1d | none → 12 | was named Cotizar PCB; resources none → Jose Lira; Nicolas Selman |
| 25 | Pagar fabricación PCB final | 2025-08-29 → 2025-09-26 (+28d) | 2025-08-29 → 2025-10-02 (+34d) | 1d? → 1d | none → 24SS | was named Comprar PCB; resources none → Jose Lira; Nicolas Selman |
| 26 | Fabricación PCB Mock up | 2025-08-29 → 2025-10-02 (+34d) | 2025-08-29 → 2025-10-07 (+39d) | 1d? → 3d | none → 25 | was named Fabricar Mockup; resources none → Proveedor |
| 28 | Cotizar componentes | 2025-08-29 → 2025-10-30 (+62d) | 2025-08-29 → 2025-11-06 (+69d) | 1d? → 1d | none → 18 | resources none → Jose Lira; Nicolas Selman |
| 29 | Comprar componentes | 2025-08-29 → 2025-11-06 (+69d) | 2025-08-29 → 2025-11-07 (+70d) | 1d? → 1d | none → 28 | resources none → Jose Lira; Nicolas Selman |
| 30 | Envío de componentes | 2025-08-29 → 2025-11-07 (+70d) | 2025-08-29 → 2025-11-21 (+84d) | 1d? → 10d | none → 29 | resources none → Proveedor |
| 34 | Envío de PCB | 2025-08-29 → 2025-11-12 (+75d) | 2025-08-29 → 2025-11-26 (+89d) | 1d? → 10d | none → 33 | resources none → Proveedor |
| 35 | **Ensamble y pruebas** | 2025-08-29 → 2025-11-26 (+89d) | 2025-08-29 → 2025-12-18 (+111d) | 1d? → 15.17d |  |  |
| 36 | Circuito de carga/descarga | 2025-08-29 → 2025-11-26 (+89d) | 2025-08-29 → 2025-11-27 (+90d) | 1d? → 1d | none → 23 | resources none → Jose Lira; Nicolas Selman |
| 37 | Circuito de medición de carga | 2025-08-29 → 2025-11-28 (+91d) | 2025-08-29 → 2025-11-28 (+91d) | 1d? → 1d | none → 36 | resources none → Jose Lira; Nicolas Selman |
| 38 | Soft latching power | 2025-08-29 → 2025-12-04 (+97d) | 2025-08-29 → 2025-12-04 (+97d) | 1d? → 1d | none → 37 | resources none → Jose Lira; Nicolas Selman |
| 39 | Conexión Luckfox Lyra | 2025-08-29 → 2025-12-05 (+98d) | 2025-08-29 → 2025-12-05 (+98d) | 1d? → 1d | none → 38 | resources none → Jose Lira; Nicolas Selman |
| 40 | RP2040 | 2025-08-29 → 2025-12-11 (+104d) | 2025-08-29 → 2025-12-11 (+104d) | 1d? → 1d | none → 39 | resources none → Jose Lira; Nicolas Selman |
| 41 | Circuito de audio | 2025-08-29 → 2025-12-12 (+105d) | 2025-08-29 → 2025-12-12 (+105d) | 1d? → 1d | none → 40 | resources none → Jose Lira; Nicolas Selman |
| 42 | Pantalla | 2025-08-29 → 2025-12-18 (+111d) | 2025-08-29 → 2025-12-18 (+111d) | 1d? → 1d | none → 41 | resources none → Jose Lira; Nicolas Selman |
| 43 | Correcciones de hardware | 2025-08-29 → 2025-12-19 (+112d) | 2025-08-29 → 2025-12-26 (+119d) | 1d? → 2d | none → 35 | resources none → Cristobal Calaf; Jose Lira; Nicolas Selman |
| 45 | **Firmware** | 2025-08-29 → 2025-10-21 (+53d) | 2025-08-29 → 2026-01-16 (+140d) | 1d? → 59.17d |  |  |
| 46 | **Luckfox Lyra** | 2025-08-29 → 2025-11-06 (+69d) | 2025-08-29 → 2026-01-16 (+140d) | 1d? → 49d |  |  |
| 47 | Linux | 2025-08-29 → 2025-11-06 (+69d) | 2025-08-29 → 2025-11-06 (+69d) | 1d? → 1d | none → 53 | resources none → Jose Lira |
| 48 | Drivers teclado | 2025-08-29 → 2025-11-07 (+70d) | 2025-08-29 → 2025-11-14 (+77d) | 1d? → 3d | none → 47 |  |
| 49 | Drivers pantalla | 2025-08-29 → 2025-11-20 (+83d) | 2025-08-29 → 2025-11-27 (+90d) | 1d? → 3d | none → 48 | resources none → Cristobal Calaf; Jose Lira |
| 50 | Drivers audio | 2025-08-29 → 2026-01-08 (+132d) | 2025-08-29 → 2026-01-15 (+139d) | 1d? → 3d | none → 55 | resources none → Cristobal Calaf; Jose Lira |
| 51 | LED RGB | 2025-08-29 → 2026-01-16 (+140d) | 2025-08-29 → 2026-01-16 (+140d) | 1d? → 1d | none → 50 | resources none → Cristobal Calaf; Jose Lira |
| 52 | **RP2040** | 2025-08-29 → 2025-10-21 (+53d) | 2025-08-29 → 2026-01-02 (+126d) | 1d? → 49.17d |  |  |
| 54 | Sistema de encendido/apagado | 2025-08-29 → 2025-12-19 (+112d) | 2025-08-29 → 2025-12-26 (+119d) | 1d? → 2d | none → 35 | resources none → Cristobal Calaf; Jose Lira |
| 55 | Medición de carga de baterías | 2025-08-29 → 2026-01-02 (+126d) | 2025-08-29 → 2026-01-02 (+126d) | 1d? → 1d | none → 54 | resources none → Cristobal Calaf; Jose Lira |
| 57 | **Diseño/Mecánica** | 2025-08-29 → 2025-09-11 (+13d) | 2025-08-29 → 2025-12-12 (+105d) | 1d? → 62d |  |  |
| 58 | Revisión del estado actual del diseño | 2025-08-29 → 2025-09-11 (+13d) | 2025-08-29 → 2025-09-26 (+28d) | 1d? → 3d | none → 5 | resources none → Cristobal Calaf; Rebeka Gallardo |
| 61 | Ajustar diseño carcasa | 2025-08-29 → 2025-10-23 (+55d) | 2025-08-29 → 2025-11-06 (+69d) | 1d? → 3d | none → 60 | resources none → Cristobal Calaf; Rebeka Gallardo |
| 62 | Diseño de anclaje | 2025-08-29 → 2025-11-06 (+69d) | 2025-08-29 → 2025-11-14 (+77d) | 1d? → 3d | none → 61 | resources none → Cristobal Calaf; Rebeka Gallardo |
| 63 | Revisión cruzada | 2025-08-29 → 2025-11-14 (+77d) | 2025-08-29 → 2025-11-21 (+84d) | 1d? → 2d | none → 62 | resources none → Cristobal Calaf; Jose Lira; Rebeka Gallardo |
| 64 | **Impresión 3D** | 2025-08-29 → 2025-11-21 (+84d) | 2025-08-29 → 2025-12-12 (+105d) | 1d? → 14d |  |  |
| 66 | Impresión de carcasa | 2025-08-29 → 2025-11-27 (+90d) | 2025-08-29 → 2025-12-04 (+97d) | 1d? → 2d | none → 65 | resources none → Jose Lira |
| 67 | Impresión de keycaps | 2025-08-29 → 2025-12-04 (+97d) | 2025-08-29 → 2025-12-12 (+105d) | 1d? → 3d | none → 66 | resources none → Jose Lira |
| 69 | **Integración** | 2025-08-29 → 2025-12-29 (+122d) | 2025-08-29 → 2026-01-20 (+144d) | 1d? → 16d |  |  |
| 70 | Ensamble Final | 2025-08-29 → 2025-12-29 (+122d) | 2025-08-29 → 2026-01-02 (+126d) | 1d? → 1d | none → 8, 57 | resources none → Cristobal Calaf; Jose Lira; Nicolas Selman; Rebeka Gallardo |
| 71 | Programar Juego en Pico-8 | 2025-08-29 → 2026-01-19 (+143d) | 2025-08-29 → 2026-01-20 (+144d) | 1d? → 2d | none → 45, 70 | resources none → Ignacio Parragué |

## Version 4 (saved 2025-10-03, file Pocket Bit-0.pod)

Note of the change: Merge branch 'main' of github.com:PepeLira/Pocket_Terminal_Project

Last finish 2026-01-20 → 2025-12-29 (-22d). Complete tasks 0 → 20.

Added:

| ID | Task | Duration | Start | Finish | Constraint | Resources |
| --- | --- | --- | --- | --- | --- | --- |
| 42 | Cargar Linux OS | 2d | 2025-10-09 | 2025-10-10 | start no earlier than 2025-10-09 | Jose Lira |
| 43 | Inducción Drivers Linux | 1d? | 2025-08-29 | 2025-08-29 |  | Jose Lira |
| 69 | Material Educativo Bit-0 | 1d? | 2025-08-29 | 2025-08-29 |  |  |

Removed: 12 Diseñar Mockup para realizar pruebas; 24 Cotizar PCB Mock up; 26 Fabricación PCB Mock up; 27 Envío PCB Mock up; 32 Pagar fabricación PCB final; 47 Linux

Changed:

| ID | Task | Start | Finish | Duration | Complete | Predecessors | Other |
| --- | --- | --- | --- | --- | --- | --- | --- |
| 1 | **MVP Pocket Terminal** |  | 2026-01-20 → 2025-12-29 (-22d) | 97d? → 82d? | 0% → 30% |  |  |
| 2 | **Administrativo** |  | 2025-10-10 → 2025-10-03 (-7d) | 28.83d? → 24d? | 0% → 100% |  |  |
| 3 | Kick-off |  |  |  | 0% → 100% |  |  |
| 4 | Especificación de requerimientos | 2025-09-04 → 2025-08-29 (-6d) | 2025-09-05 → 2025-08-29 (-7d) |  | 0% → 100% |  |  |
| 5 | Diagrama de bloques general | 2025-09-05 → 2025-09-04 (-1d) | 2025-09-11 → 2025-09-04 (-7d) |  | 0% → 100% |  |  |
| 6 | Definir nombre final del proyecto | 2025-10-10 → 2025-10-03 (-7d) | 2025-10-10 → 2025-10-03 (-7d) |  | 0% → 100% |  |  |
| 8 | **Electrónico** | 2025-09-11 → 2025-08-29 (-13d) | 2025-12-26 → 2025-12-04 (-22d) | 71.17d → 67d | 0% → 46% |  |  |
| 9 | **Diseño electrónico** | 2025-09-11 → 2025-08-29 (-13d) | 2025-10-16 → 2025-09-12 (-34d) | 23d → 11d | 0% → 100% |  |  |
| 10 | Diagrama de bloques electrónico | 2025-09-11 → 2025-09-05 (-6d) | 2025-09-12 → 2025-09-05 (-7d) |  | 0% → 100% |  |  |
| 11 | Revisión de estado inicial esquemático | 2025-09-12 → 2025-09-11 (-1d) | 2025-09-25 → 2025-09-11 (-14d) |  | 0% → 100% |  |  |
| 12 | Diseño de circuito de audio | 2025-09-26 → 2025-08-29 (-28d) | 2025-10-02 → 2025-08-29 (-34d) |  | 0% → 100% | Diseñar Mockup para realizar pruebas → none |  |
| 13 | Diseño de circuito de carga/descarga de baterías | 2025-10-02 → 2025-09-04 (-28d) | 2025-10-03 → 2025-09-04 (-29d) |  | 0% → 100% |  |  |
| 14 | Diseño de circuito de soft latching power | 2025-10-03 → 2025-09-05 (-28d) | 2025-10-09 → 2025-09-05 (-34d) |  | 0% → 100% |  |  |
| 15 | Diseño de circuito de medición de carga de baterías | 2025-10-09 → 2025-09-11 (-28d) | 2025-10-10 → 2025-09-11 (-29d) |  | 0% → 100% |  |  |
| 16 | Revisión final de esquemático/ Revisión Cruzada | 2025-10-10 → 2025-09-12 (-28d) | 2025-10-16 → 2025-09-12 (-34d) |  | 0% → 100% |  |  |
| 17 | **PCB** | 2025-10-16 → 2025-09-25 (-21d) | 2025-10-30 → 2025-10-03 (-27d) | 10d → 7d | 0% → 100% |  |  |
| 18 | Diseño de PCB | 2025-10-16 → 2025-09-25 (-21d) | 2025-10-23 → 2025-09-26 (-27d) |  | 0% → 100% |  |  |
| 19 | Revisión de PCB | 2025-10-23 → 2025-10-02 (-21d) | 2025-10-24 → 2025-10-02 (-22d) |  | 0% → 100% |  |  |
| 20 | Crear BOM | 2025-10-24 → 2025-10-03 (-21d) | 2025-10-30 → 2025-10-03 (-27d) |  | 0% → 100% |  |  |
| 21 | Crear Gerber | 2025-10-24 → 2025-10-03 (-21d) | 2025-10-30 → 2025-10-03 (-27d) |  | 0% → 100% |  |  |
| 22 | **Fabricación** | 2025-09-26 → 2025-10-09 (+13d) | 2025-11-26 → 2025-11-04 (-22d) | 42d → 18d | 0% → 26% |  | constraint none → start no earlier than 2025-10-02 |
| 23 | Cotizar componentes | 2025-10-30 → 2025-10-09 (-21d) | 2025-11-06 → 2025-10-09 (-28d) |  | 0% → 100% |  | constraint none → start no earlier than 2025-10-02 |
| 24 | Comprar componentes | 2025-11-06 → 2025-10-10 (-27d) | 2025-11-07 → 2025-10-10 (-28d) |  | 0% → 100% |  |  |
| 25 | Envío de componentes | 2025-11-07 → 2025-10-16 (-22d) | 2025-11-21 → 2025-10-29 (-23d) |  |  |  |  |
| 26 | Cotizar PCB final | 2025-10-30 → 2025-10-09 (-21d) | 2025-11-06 → 2025-10-09 (-28d) |  | 0% → 100% |  |  |
| 27 | Pagar fabricación PCB final | 2025-09-26 → 2025-10-10 (+14d) | 2025-10-02 → 2025-10-10 (+8d) |  | 0% → 100% | Cotizar PCB Mock upSS → 26 |  |
| 28 | Fabricación de PCB final | 2025-11-07 → 2025-10-16 (-22d) | 2025-11-12 → 2025-10-20 (-23d) |  |  | Pagar fabricación PCB final → 27 |  |
| 29 | Envío de PCB | 2025-11-12 → 2025-10-21 (-22d) | 2025-11-26 → 2025-11-04 (-22d) |  |  |  |  |
| 30 | **Ensamble y pruebas** | 2025-11-26 → 2025-11-05 (-21d) | 2025-12-18 → 2025-11-27 (-21d) | 15.17d → 17d |  |  |  |
| 31 | Circuito de carga/descarga | 2025-11-26 → 2025-11-05 (-21d) | 2025-11-27 → 2025-11-06 (-21d) |  |  |  |  |
| 32 | Circuito de medición de carga | 2025-11-28 → 2025-11-07 (-21d) | 2025-11-28 → 2025-11-07 (-21d) |  |  |  |  |
| 33 | Soft latching power | 2025-12-04 → 2025-11-13 (-21d) | 2025-12-04 → 2025-11-13 (-21d) |  |  |  |  |
| 34 | Conexión Luckfox Lyra | 2025-12-05 → 2025-11-14 (-21d) | 2025-12-05 → 2025-11-14 (-21d) |  |  |  |  |
| 35 | RP2040 | 2025-12-11 → 2025-11-20 (-21d) | 2025-12-11 → 2025-11-20 (-21d) |  |  |  |  |
| 36 | Circuito de audio | 2025-12-12 → 2025-11-21 (-21d) | 2025-12-12 → 2025-11-21 (-21d) |  |  |  |  |
| 37 | Pantalla | 2025-12-18 → 2025-11-27 (-21d) | 2025-12-18 → 2025-11-27 (-21d) |  |  |  |  |
| 38 | Correcciones de hardware | 2025-12-19 → 2025-11-28 (-21d) | 2025-12-26 → 2025-12-04 (-22d) |  |  |  |  |
| 40 | **Firmware** | 2025-10-21 → 2025-08-29 (-53d) | 2026-01-16 → 2025-12-11 (-36d) | 59.17d → 71d? |  |  |  |
| 41 | **Luckfox Lyra** | 2025-11-06 → 2025-08-29 (-69d) | 2026-01-16 → 2025-12-11 (-36d) | 49d → 71d? |  |  |  |
| 44 | Drivers teclado | 2025-11-07 → 2025-10-16 (-22d) | 2025-11-14 → 2025-10-23 (-22d) |  |  | Linux → 42 |  |
| 45 | Drivers pantalla | 2025-11-20 → 2025-10-24 (-27d) | 2025-11-27 → 2025-10-30 (-28d) | 3d → 2d |  |  | resources Cristobal Calaf; Jose Lira → Cristobal Calaf; Jose Lira; Nicolas Selman |
| 46 | Drivers audio | 2026-01-08 → 2025-12-05 (-34d) | 2026-01-15 → 2025-12-11 (-35d) | 3d → 2d |  |  | resources Cristobal Calaf; Jose Lira → Cristobal Calaf; Jose Lira; Nicolas Selman |
| 47 | **RP2040** | 2025-10-21 → 2025-08-29 (-53d) | 2026-01-02 → 2025-12-04 (-29d) | 49.17d → 67d? |  |  |  |
| 48 | LED RGB | 2026-01-16 → 2025-08-29 (-140d) | 2026-01-16 → 2025-08-29 (-140d) | 1d → 1d? |  | 46 → none | resources Cristobal Calaf; Jose Lira → none |
| 49 | Firmware de teclas | 2025-10-21 → 2025-10-09 (-12d) | 2025-10-30 → 2025-10-17 (-13d) | 3d → 4d |  | Envío PCB Mock up → none | constraint none → start no earlier than 2025-10-09; resources Cristobal Calaf; Jose Lira → Cristobal Calaf; Jose Lira; Nicolas Selman |
| 50 | Sistema de encendido/apagado | 2025-12-19 → 2025-11-28 (-21d) | 2025-12-26 → 2025-12-04 (-22d) | 2d → 1.33d |  |  | resources Cristobal Calaf; Jose Lira → Cristobal Calaf; Jose Lira; Nicolas Selman |
| 51 | Medición de carga de baterías | 2026-01-02 → 2025-12-04 (-29d) | 2026-01-02 → 2025-12-04 (-29d) | 1d → 0.67d |  |  | resources Cristobal Calaf; Jose Lira → Cristobal Calaf; Jose Lira; Nicolas Selman |
| 53 | **Diseño/Mecánica** | 2025-09-11 → 2025-09-05 (-6d) | 2025-12-12 → 2025-12-18 (+6d) | 62d → 71d | 0% → 13% |  |  |
| 54 | Revisión del estado actual del diseño | 2025-09-11 → 2025-09-05 (-6d) | 2025-09-26 → 2025-09-12 (-14d) |  | 0% → 100% |  |  |
| 55 | Desarrollo conceptual nueva carcasa | 2025-09-26 → 2025-10-03 (+7d) | 2025-10-10 → 2025-10-16 (+6d) |  |  |  | constraint none → start no earlier than 2025-10-03 |
| 56 | Ajustar mecánica de las teclas | 2025-10-10 → 2025-10-17 (+7d) | 2025-10-23 → 2025-10-24 (+1d) |  |  |  |  |
| 57 | Ajustar diseño carcasa | 2025-10-23 → 2025-10-30 (+7d) | 2025-11-06 → 2025-11-07 (+1d) |  |  |  |  |
| 58 | Diseño de anclaje | 2025-11-06 → 2025-11-13 (+7d) | 2025-11-14 → 2025-11-20 (+6d) |  |  |  |  |
| 59 | Revisión cruzada | 2025-11-14 → 2025-11-21 (+7d) | 2025-11-21 → 2025-11-27 (+6d) |  |  |  |  |
| 60 | **Impresión 3D** | 2025-11-21 → 2025-11-28 (+7d) | 2025-12-12 → 2025-12-18 (+6d) |  |  |  |  |
| 61 | Ajuste márgenes para Impresión 3D | 2025-11-21 → 2025-11-28 (+7d) | 2025-11-27 → 2025-11-28 (+1d) |  |  | Envío PCB Mock up, 59 → 59 |  |
| 62 | Impresión de carcasa | 2025-11-27 → 2025-12-04 (+7d) | 2025-12-04 → 2025-12-05 (+1d) |  |  |  |  |
| 63 | Impresión de keycaps | 2025-12-04 → 2025-12-11 (+7d) | 2025-12-12 → 2025-12-18 (+6d) |  |  |  |  |
| 65 | **Integración** | 2025-12-29 → 2025-12-19 (-10d) | 2026-01-20 → 2025-12-29 (-22d) | 16d → 6d |  |  |  |
| 66 | Ensamble Final | 2025-12-29 → 2025-12-19 (-10d) | 2026-01-02 → 2025-12-19 (-14d) |  |  |  |  |
| 67 | Programar Juego en Pico-8 | 2026-01-19 → 2025-12-26 (-24d) | 2026-01-20 → 2025-12-29 (-22d) |  |  |  |  |
